# proj

Schedule from MS Project, 2019-05-20 to 2020-01-20, costs in €.

## Calendars

- Padrão: Mon-Fri 08:00-12:00, 13:00-17:00; Sat-Sun off.

## Resources

| Resource | Rate |
| --- | --- |
| Radio Department | 80 |
| Regulation Department | 80 |
| Managment Department | 80 |
| Law Department | 80 |
| Buying Department | 40 |
| Marketing Department | 40 |
| Project leader | 100 |
| Location Owner |  |
| Constructor |  |
| Energy Supplier |  |
| Equipment Supplier |  |
| Link Supplier |  |
| ANACOM |  |
| Town Hall |  |
| Police Forces |  |
| Equipment Tranportation |  |

## Schedule

| ID | WBS | Task | Duration | Start | Finish | Predecessors | Total slack | Constraint | Resources | Work | Cost |
| --- | --- | --- | --- | --- | --- | --- | --- | --- | --- | --- | --- |
| 1 | 1 | **Project** | 176d | 2019-05-20 | 2020-01-20 |  |  |  | Project leader | 4944h | 414,760 |
| 2 | 1.1 | **Project Initiation** | 20d | 2019-05-20 | 2019-06-14 |  |  |  |  | 592h | 38,720 |
| 3 | 1.1.1 | Inicial Meeting | 1d | 2019-05-20 | 2019-05-20 |  | 0d |  | Managment Department; Marketing Department; Radio Department; Law Department; Regulation Department; Buying Department | 48h | 3,200 |
| 4 | 1.1.2 | Objective and requisition Definition | 2w | 2019-05-21 | 2019-06-03 | 3 | 0d |  | Managment Department; Law Department; Radio Department; Marketing Department; Buying Department | 400h | 25,600 |
| 5 | 1.1.3 | Stakeholders identification and Priorities | 1w | 2019-06-04 | 2019-06-10 | 4 | 0d |  | Managment Department; Marketing Department | 80h | 4,800 |
| 6 | 1.1.4 | Studie of the necessary material | 4d | 2019-06-11 | 2019-06-14 | 5 | 0d | start no earlier than 2019-06-11 | Managment Department; Radio Department | 64h | 5,120 |
| 7 | 1.2 | **Project Planning** | 112d | 2019-06-17 | 2019-11-19 | 5 |  |  |  | 2296h | 182,740 |
| 8 | 1.2.1 | **Initial Planning** | 35d | 2019-06-17 | 2019-08-02 | 6 |  |  |  | 600h | 40,000 |
| 9 | 1.2.1.1 | Objective Definitions and Creation of WBS | 2w | 2019-06-17 | 2019-06-28 | 6 | 0d | start no earlier than 2019-06-17 | Managment Department; Radio Department | 160h | 12,800 |
| 10 | 1.2.1.2 | Definition of the plane of activities | 1w | 2019-07-01 | 2019-07-05 | 9 | 0d |  | Managment Department | 40h | 3,200 |
| 11 | 1.2.1.3 | Set Budget ceilings | 2w | 2019-07-08 | 2019-07-19 | 10 | 0d |  | Buying Department; Managment Department; Marketing Department | 240h | 12,800 |
| 12 | 1.2.1.4 | Risk Analyze | 1w | 2019-07-22 | 2019-07-26 | 11 | 0d |  | Marketing Department; Managment Department | 80h | 4,800 |
| 13 | 1.2.1.5 | Review of current Regulation | 1w | 2019-07-29 | 2019-08-02 | 12 | 0d |  | Regulation Department; Law Department | 80h | 6,400 |
| 14 | 1.2.2 | **Formalization of technical requirements** | 10d | 2019-08-05 | 2019-08-16 | 13 |  |  |  | 200h | 14,400 |
| 15 | 1.2.2.1 | Get the Material Letter and equipment list | 1w | 2019-08-05 | 2019-08-09 | 13 | 0d | start no earlier than 2019-08-05 | Buying Department; Radio Department [200%]; Managment Department | 120h | 8,000 |
| 16 | 1.2.2.2 | Ascertain Energy Requirements | 1w | 2019-08-12 | 2019-08-16 | 15 | 0d |  | Radio Department [200%] | 80h | 6,400 |
| 17 | 1.2.3 | **Location Study** | 20d | 2019-08-19 | 2019-09-13 | 16 |  |  |  | 176h | 20,680 |
| 18 | 1.2.3.1 | Study of the Candidate Locations | 1w | 2019-08-19 | 2019-08-23 | 16 | 0d | start no earlier than 2019-08-19 | Radio Department; Town Hall [0.1%]; Location Owner [0.1%] | 40h | 3,200 |
| 19 | 1.2.3.2 | Visit the different Candidates Locations | 2w | 2019-08-26 | 2019-09-06 | 18 | 0d |  | Radio Department; Police Forces [0.1%]; Location Owner [0.1%] | 80h | 8,000 |
| 20 | 1.2.3.3 | Creation of the Priorities List | 1d | 2019-09-09 | 2019-09-09 | 19 | 0d |  | Radio Department [300%] | 24h | 1,920 |
| 21 | 1.2.3.4 | Negotiation with the local Owners | 3d | 2019-09-10 | 2019-09-12 | 20 | 0d |  | Managment Department | 24h | 1,920 |
| 22 | 1.2.3.5 | Definition of the best Location | 1d | 2019-09-13 | 2019-09-13 | 21 | 0d |  | Radio Department; Location Owner [0.1%] | 8h | 5,640 |
| 23 | 1.2.4 | **Get Autorizations** | 3d | 2019-09-16 | 2019-09-18 | 22 |  |  |  | 24h | 1,920 |
| 24 | 1.2.4.1 | Meeting with the city hall staff | 1d | 2019-09-16 | 2019-09-16 | 22 | 0d |  | Law Department | 8h | 640 |
| 25 | 1.2.4.2 | Meeting with the ANACOM | 1d | 2019-09-17 | 2019-09-17 | 24 | 0d | start no earlier than 2019-09-16 | Law Department | 8h | 640 |
| 26 | 1.2.4.3 | Meeting with the Police Forces | 1d | 2019-09-18 | 2019-09-18 | 25 | 0d |  | Law Department | 8h | 640 |

| ID | WBS | Task | Duration | Start | Finish | Predecessors | Total slack | Free slack | Constraint | Resources | Work | Cost |
| --- | --- | --- | --- | --- | --- | --- | --- | --- | --- | --- | --- | --- |
| 27 | 1.2.5 | **Purchase equipment** | 9d | 2019-09-19 | 2019-10-01 | 26 |  |  |  |  | 136h | 15,820 |
| 28 | 1.2.5.1 | Equipment Identification | 1w | 2019-09-19 | 2019-09-25 | 26 | 83d |  | start no earlier than 2019-09-18 | Radio Department | 40h | 3,200 |
| 29 | 1.2.5.2 | Get Suppliers | 1w | 2019-09-19 | 2019-09-25 | 26 | 1d | 0d |  | Buying Department | 40h | 1,600 |
| 30 | 1.2.5.3 | Negotiation with the suppliers | 3d | 2019-09-26 | 2019-09-30 | 29 | 1d | 0d |  | Buying Department; Managment Department; Equipment Supplier [0.1%] | 48h | 2,880 |
| 31 | 1.2.5.4 | Celebrate the Contract | 1d | 2019-10-01 | 2019-10-01 | 30 | 79d |  | start no earlier than 2019-09-26 | Law Department; Equipment Supplier [0.1%] | 8h | 8,140 |
| 32 | 1.2.6 | **Purchase Materials** | 21d | 2019-09-19 | 2019-10-17 | 26 |  |  |  |  | 288h | 18,140 |
| 33 | 1.2.6.1 | Get Suppliers | 1w | 2019-09-19 | 2019-09-25 | 26 | 0d |  | start no earlier than 2019-09-18 | Buying Department | 40h | 1,600 |
| 34 | 1.2.6.2 | Negotiation with the suppliers | 15d | 2019-09-26 | 2019-10-16 | 33 | 0d |  |  | Buying Department; Managment Department; Equipment Supplier [0.1%] | 240h | 14,400 |
| 35 | 1.2.6.3 | Celebrate the Contract | 1d | 2019-10-17 | 2019-10-17 | 34 | 0d |  |  | Law Department; Equipment Supplier [0.1%] | 8h | 2,140 |
| 36 | 1.2.7 | **Construction Project** | 12d | 2019-10-18 | 2019-11-04 | 35 |  |  |  |  | 144h | 10,480 |
| 37 | 1.2.7.1 | Get contractores | 1w | 2019-10-18 | 2019-10-24 | 35 | 0d |  |  | Buying Department; Managment Department | 80h | 4,800 |
| 38 | 1.2.7.2 | Negotiate the Contract | 1d | 2019-10-25 | 2019-10-25 | 37 | 0d |  |  | Buying Department; Marketing Department | 16h | 640 |
| 39 | 1.2.7.3 | Celebrate Contract | 1d | 2019-10-28 | 2019-10-28 | 38 | 0d |  |  | Law Department | 8h | 640 |
| 40 | 1.2.7.4 | Implementation Study | 1w | 2019-10-29 | 2019-11-04 | 39 | 0d |  |  | Radio Department; Constructor [0.1%] | 40h | 4,400 |
| 41 | 1.2.8 | **Energy Project** | 23d | 2019-10-18 | 2019-11-19 | 35 |  |  |  |  | 280h | 24,260 |
| 42 | 1.2.8.1 | Elaborate the Energetical Study | 2w | 2019-10-18 | 2019-10-31 | 35 | 0d |  |  | Radio Department | 80h | 6,400 |
| 43 | 1.2.8.2 | Get Suppliers | 2d | 2019-11-01 | 2019-11-04 | 42 | 0d |  |  | Buying Department; Managment Department; Energy Supplier [0.1%] | 32h | 1,920 |
| 44 | 1.2.8.3 | Celebrate Contract | 1d | 2019-11-05 | 2019-11-05 | 43 | 0d |  |  | Law Department; Energy Supplier [0.1%] | 8h | 3,140 |
| 45 | 1.2.8.4 | Implementation Study | 2w | 2019-11-06 | 2019-11-19 | 44 | 0d |  |  | Radio Department [200%] | 160h | 12,800 |
| 46 | 1.2.9 | **Links Project** | 23d | 2019-10-18 | 2019-11-19 | 35 |  |  |  |  | 448h | 37,040 |
| 47 | 1.2.9.1 | Link Study | 2w | 2019-10-18 | 2019-10-31 | 35 | 0d |  |  | Radio Department; Link Supplier [0.1%] | 80h | 7,600 |
| 48 | 1.2.9.2 | Compliance Analysis | 3d | 2019-11-01 | 2019-11-05 | 47 | 0d |  |  | Radio Department; Regulation Department; ANACOM [0.1%]; Link Supplier [0.1%] | 48h | 3,840 |
| 49 | 1.2.9.3 | Implementation Study | 2w | 2019-11-06 | 2019-11-19 | 48 | 0d |  |  | Radio Department [400%] | 320h | 25,600 |
| 50 | 1.3 | **Implementation of the Project** | 39d | 2019-11-20 | 2020-01-13 | 49 |  |  |  |  | 472h | 40,980 |
| 51 | 1.3.1 | **Implementation Study** | 10d | 2019-11-20 | 2019-12-03 | 49 |  |  |  |  | 208h | 16,240 |
| 52 | 1.3.1.1 | Elaboration of the Telecomunication Project | 1w | 2019-11-20 | 2019-11-26 | 49 | 0d |  | start no earlier than 2019-11-18 | Managment Department; Radio Department [200%] | 48h | 3,840 |
| 53 | 1.3.1.2 | Elaboration of the Energy Project | 1w | 2019-11-27 | 2019-12-03 | 52 | 0d |  | finish no earlier than 2019-10-24 | Radio Department [200%]; Buying Department; Managment Department [200%]; Energy Supplier [0.1%]; Regulation Department | 160h | 12,400 |

| ID | WBS | Task | Duration | Start | Finish | Predecessors | Total slack | Constraint | Resources | Work | Cost |
| --- | --- | --- | --- | --- | --- | --- | --- | --- | --- | --- | --- |
| 54 | 1.3.2 | **Construction** | 14d | 2019-12-04 | 2019-12-23 | 53 |  |  |  | 56h | 7,680 |
| 55 | 1.3.2.1 | Drafting the Workbook | 2d | 2019-12-04 | 2019-12-05 | 53 | 0d | start no earlier than 2019-12-02 | Buying Department; Energy Supplier [0.1%]; Managment Department; Radio Department | 48h | 3,680 |
| 56 | 1.3.2.2 | Infrastructure construction | 7d | 2019-12-06 | 2019-12-16 | 55 | 0d |  | Constructor [0.1%]; Police Forces [0.1%] |  | 3,120 |
| 57 | 1.3.2.3 | Fiscalization | 1d | 2019-12-17 | 2019-12-23 | 56 | 0d | finish no earlier than 2019-09-18 | Radio Department; Constructor [0.1%] | 8h | 880 |
| 58 | 1.3.3 | **Assembly of the equipment** | 15d | 2019-12-24 | 2020-01-13 | 57 |  |  |  | 208h | 17,060 |
| 59 | 1.3.3.1 | Equipment Transportation | 2d | 2019-12-24 | 2019-12-25 | 57 | 0d | start no earlier than 2019-12-20 | Equipment Tranportation [0.1%] |  | 420 |
| 60 | 1.3.3.2 | Configuration and assembly of the equipment | 3d | 2019-12-26 | 2019-12-30 | 59 | 0d |  | Radio Department [200%] | 48h | 3,840 |
| 61 | 1.3.3.3 | **Integration and test** | 10d | 2019-12-31 | 2020-01-13 | 60 |  |  |  | 160h | 12,800 |
| 62 | 1.3.3.3.1 | Radio configuration | 2d | 2019-12-31 | 2020-01-01 | 60 | 0d | start no earlier than 2019-12-27 | Radio Department [200%] | 32h | 2,560 |
| 63 | 1.3.3.3.2 | Network connection | 1d | 2020-01-02 | 2020-01-02 | 62 | 0d | finish no earlier than 2019-09-12 | Radio Department [200%] | 16h | 1,280 |
| 64 | 1.3.3.3.3 | Network tests | 5d | 2020-01-03 | 2020-01-09 | 63 | 0d |  | Radio Department [200%] | 80h | 6,400 |
| 65 | 1.3.3.3.4 | Service guarantee | 2d | 2020-01-10 | 2020-01-13 | 64 | 0d |  | Radio Department [200%] | 32h | 2,560 |
| 66 | 1.4 | **Project Finalization** | 5d | 2020-01-14 | 2020-01-20 | 65 |  |  |  | 176h | 11,520 |
| 67 | 1.4.1 | Final Meeting | 1d | 2020-01-14 | 2020-01-14 | 65 | 0d |  | Radio Department; Managment Department; Buying Department; Marketing Department; Regulation Department; Law Department; Location Owner [0.1%] | 48h | 3,200 |
| 68 | 1.4.2 | Final Reports | 3d | 2020-01-15 | 2020-01-17 | 67 | 0d |  | Radio Department; Managment Department; Buying Department; Marketing Department; Regulation Department | 120h | 7,680 |
| 69 | 1.4.3 | Project Evaluation | 1d | 2020-01-20 | 2020-01-20 | 68 | 0d |  | Managment Department; Location Owner [0.1%] | 8h | 640 |
